# DSE13 Gantt

Schedule from MS Project, 2025-04-22 to 2025-06-27, A marks actual dates.

## Calendars

- Standard: Mon-Fri 08:00-12:00, 13:00-17:00; Sat-Sun off.

## Resources

| Resource |
| --- |
| Kilian |
| ALL |
| David Peeters |
| Isaac Pietro Doyle |
| Django van der Plas |
| Kilian Seibl |
| Tom Spaans |
| IPD |
| DvdP |
| TS |
| KS |
| DP |
| JQ |
| MS |
| RV |
| JFM |
| TK |
| IDP |

## Schedule

| ID | WBS | Task | Type | Duration | Start | Finish | Predecessors | Complete | Total slack | Free slack | Constraint | Resources | Work |
| --- | --- | --- | --- | --- | --- | --- | --- | --- | --- | --- | --- | --- | --- |
| 1 | 1 | Project Kickoff | milestone | 0d | 2025-04-22 08:00 A | 2025-04-22 08:00 A |  | 100% |  |  |  |  |  |
| 2 | 1 | **Project Foundation** |  | 4.5d | 2025-04-22 08:00 | 2025-04-28 12:00 | 1SS |  | 22.25d | 0d |  |  | 39h |
| 3 | 1.1 | **Familiarization** |  | 0.25d | 2025-04-22 08:00 | 2025-04-22 10:00 |  |  | 22.25d | 0d |  |  | 3h |
| 4 | 1.1.1 | **Read the Project Guide** |  | 0.12d | 2025-04-22 08:00 | 2025-04-22 09:00 |  |  | 22.25d | 0d |  | ALL | 1h |
| 5 | 1.1.1.1 | Define MNS |  | 1h | 2025-04-22 08:00 | 2025-04-22 09:00 |  |  | 22.25d |  |  |  |  |
| 6 | 1.1.1.2 | Define POS |  | 1h | 2025-04-22 08:00 | 2025-04-22 09:00 |  |  | 22.25d |  |  |  |  |
| 7 | 1.1.2 | Discuss Mission with Supervisors |  | 1h | 2025-04-22 09:00 | 2025-04-22 10:00 | 4, 8 |  | 22.25d |  |  | ALL | 1h |
| 8 | 1.1.3 | Read Paper on X-zyLo |  | 1h | 2025-04-22 08:00 | 2025-04-22 09:00 |  |  | 22.25d | 0d |  | ALL | 1h |
| 9 | 1.2 | **Define Organizational Structure** |  | 0.5d | 2025-04-22 10:00 | 2025-04-22 15:00 | 3 |  | 22.25d | 0d |  |  | 4h |
| 10 | 1.2.1 | Discuss Expectations |  | 1h | 2025-04-22 10:00 | 2025-04-22 11:00 | 3 |  | 22.25d | 0d |  | ALL | 1h |
| 11 | 1.2.2 | Define Team Rules |  | 1h | 2025-04-22 11:00 | 2025-04-22 12:00 | 10 |  | 22.25d | 0d | start no earlier than 2025-04-22 09:00 | DP | 1h |
| 12 | 1.2.3 | **Construct Organogram** |  | 0.25d | 2025-04-22 13:00 | 2025-04-22 15:00 | 11 |  | 22.25d |  |  | DP | 2h |
| 13 | 1.2.3.1 | Define Team Roles |  | 1h | 2025-04-22 13:00 | 2025-04-22 14:00 |  |  | 22.25d | 0d |  |  |  |
| 14 | 1.2.3.2 | Assign Team Roles |  | 1h | 2025-04-22 14:00 | 2025-04-22 15:00 | 13 |  | 22.25d |  |  |  |  |
| 15 | 1.3 | **Define the Planning** |  | 2.25d | 2025-04-22 15:00 | 2025-04-24 17:00 | 9 |  | 22.25d | 0d |  |  | 18h |
| 16 | 1.3.1 | Create Overview of the Phases |  | 1h | 2025-04-22 15:00 | 2025-04-22 16:00 |  |  | 22.25d | 0d |  | IPD | 1h |
| 17 | 1.3.2 | Create Workflow Diagram |  | 6h | 2025-04-22 16:00 | 2025-04-23 14:00 | 16 |  | 22.25d | 0d |  | DvdP | 6h |
| 18 | 1.3.3 | Create Work Breakdown Structure |  | 4h | 2025-04-23 14:00 | 2025-04-24 09:00 | 17 |  | 22.25d | 0d |  | TS | 4h |
| 19 | 1.3.4 | **Create Gantt Chart** |  | 0.88d | 2025-04-24 09:00 | 2025-04-24 17:00 | 18 |  | 22.25d |  |  | KS | 7h |
| 20 | 1.3.4.1 | Define Work Packages |  | 4h | 2025-04-24 09:00 | 2025-04-24 14:00 |  |  | 22.25d | 0d |  |  |  |
| 21 | 1.3.4.2 | Create Time Frames |  | 2h | 2025-04-24 14:00 | 2025-04-24 16:00 | 20 |  | 22.25d | 0d |  |  |  |
| 22 | 1.3.4.3 | Assign Work Packages |  | 1h | 2025-04-24 16:00 | 2025-04-24 17:00 | 21 |  | 22.25d |  |  |  |  |
| 23 | 1.5 | **Project Plan** |  | 1.5d | 2025-04-25 08:00 | 2025-04-28 12:00 | 15, 28 |  | 22.25d |  |  |  | 12h |
| 24 | 1.5.1 | Draft Project Plan |  | 8h | 2025-04-25 08:00 | 2025-04-25 17:00 |  |  | 22.25d | 0d |  | RV | 8h |
| 25 | 1.5.2 | Review Project Plan |  | 2h | 2025-04-28 08:00 | 2025-04-28 10:00 | 24 |  | 22.25d | 0d |  | JFM | 2h |
| 26 | 1.5.3 | Implement Feedback |  | 1h | 2025-04-28 10:00 | 2025-04-28 11:00 | 25 |  | 22.25d | 0d |  | TK | 1h |
| 27 | 1.5.4 | Create Personal Appendix |  | 1h | 2025-04-28 11:00 | 2025-04-28 12:00 | 26 |  | 22.25d |  |  | ALL | 1h |

| ID | WBS | Task | Duration | Start | Finish | Predecessors | Total slack | Free slack | Resources | Work |
| --- | --- | --- | --- | --- | --- | --- | --- | --- | --- | --- |
| 28 | 1.4 | **Define Risk and Sustainability** | 0.25d | 2025-04-22 15:00 | 2025-04-22 17:00 | 15SS | 24.25d | 2d |  | 2h |
| 29 | 1.4.1 | Perform SWOT Analysis | 0.5h | 2025-04-22 15:00 | 2025-04-22 15:30 |  | 24.25d | 0d | JQ | 0.5h |
| 30 | 1.4.2 | Make Risk Mitigation Plan | 1h | 2025-04-22 15:30 | 2025-04-22 16:30 | 29 | 24.25d | 0d | MS | 1h |
| 31 | 1.4.3 | **Make a Sustainable Approach Plan** | 0.06d | 2025-04-22 16:30 | 2025-04-22 17:00 | 30 | 24.25d |  | JQ | 0.5h |
| 32 | 1.4.3.1 | Create Risk Heat Map on Sustainability | 0.2h | 2025-04-22 16:30 | 2025-04-22 16:42 |  | 24.25d | 0d |  |  |
| 33 | 1.4.3.2 | Define Project Contribution to Sustainability | 0.3h | 2025-04-22 16:42 | 2025-04-22 17:00 | 32 | 24.25d |  |  |  |
| 34 | 3 | **Preliminary Design & Trade-Off** | 9.56d | 2025-05-01 13:30 | 2025-05-15 09:00 | 163 | 22.25d | 0d |  |  |
| 35 | 3.1 | **Size System** | 2.5d | 2025-05-01 13:30 | 2025-05-06 08:30 |  | 22.25d | 0d |  |  |
| 36 | 3.1.1 | **Perform Weight Estimation** | 0.62d | 2025-05-01 13:30 | 2025-05-02 09:30 |  | 22.88d | 0d |  |  |
| 37 | 3.1.1.1 | Create Mass Budget | 5h | 2025-05-01 13:30 | 2025-05-02 09:30 |  | 22.88d |  |  |  |
| 38 | 3.1.2 | **Size Drone** | 1.25d | 2025-05-02 09:30 | 2025-05-05 11:30 | 36 | 22.88d |  |  |  |
| 39 | 3.1.2.1 | Size Wing and Gyroscope | 5h | 2025-05-02 09:30 | 2025-05-02 15:30 |  | 22.88d | 0d |  |  |
| 40 | 3.1.2.2 | Create Drag Estimation | 2h | 2025-05-02 15:30 | 2025-05-05 08:30 | 39 | 22.88d | 0d |  |  |
| 41 | 3.1.2.3 | Size Propulsion System | 3h | 2025-05-05 08:30 | 2025-05-05 11:30 | 40 | 22.88d |  |  |  |
| 42 | 3.1.3 | **Extend Simulation** | 2.5d | 2025-05-01 13:30 | 2025-05-06 08:30 | 36SS | 22.25d |  |  |  |
| 43 | 3.1.3.1 | Implement Propulsion & Actuators | 10h | 2025-05-01 13:30 | 2025-05-02 15:30 |  | 22.25d | 0d |  |  |
| 44 | 3.1.3.2 | Implement Control Capability | 10h | 2025-05-02 15:30 | 2025-05-06 08:30 | 43 | 22.25d |  |  |  |
| 45 | 3.2 | **Perform Preliminary Subsystem Design** | 4.81d | 2025-05-06 08:30 | 2025-05-12 16:00 | 35 | 22.25d | 0d |  |  |
| 46 | 3.2.1 | Make N2 Chart | 2h | 2025-05-06 08:30 | 2025-05-06 10:30 |  | 22.25d | 0d |  |  |
| 47 | 3.2.2 | **Perform Aerodynamic Design** | 1.88d | 2025-05-06 10:30 | 2025-05-08 09:30 | 46 | 22.25d | 0d |  |  |
| 48 | 3.2.2.1 | Generate Structure Mesh | 4h | 2025-05-06 10:30 | 2025-05-06 15:30 |  | 22.25d | 0d |  |  |
| 49 | 3.2.2.2 | Perform CFD Analysis | 10h | 2025-05-06 15:30 | 2025-05-08 08:30 | 48 | 22.25d | 0d |  |  |
| 50 | 3.2.2.3 | Export Lift, Drag, Moment | 1h | 2025-05-08 08:30 | 2025-05-08 09:30 | 49 | 22.25d | 0d |  |  |
| 51 | 3.2.3 | **Perform Control & Stability Design** | 2.06d | 2025-05-08 09:30 | 2025-05-12 10:00 | 47SS | 22.25d | 0d |  |  |
| 52 | 3.2.3.1 | Run Dynamic Simulation | 2.5h | 2025-05-08 09:30 | 2025-05-08 12:00 | 50 | 22.25d | 0d |  |  |
| 53 | 3.2.3.2 | Size Actuators | 10h | 2025-05-08 13:00 | 2025-05-09 15:00 | 52 | 22.25d | 0d |  |  |
| 54 | 3.2.3.3 | Size Electronics & Sensors | 4h | 2025-05-09 15:00 | 2025-05-12 10:00 | 53 | 22.25d |  |  |  |

| ID | WBS | Task | Duration | Start | Finish | Predecessors | Total slack | Free slack |
| --- | --- | --- | --- | --- | --- | --- | --- | --- |
| 55 | 3.2.4 | **Perform Power & Propulsion Design** | 3.75d | 2025-05-06 10:30 | 2025-05-12 08:30 | 47SS | 22.44d | 0.19d |
| 56 | 3.2.4.1 | Size Propulsion | 2.5h | 2025-05-06 10:30 | 2025-05-06 14:00 |  | 24.31d | 1.88d |
| 57 | 3.2.4.2 | Size Actuators | 10h | 2025-05-08 13:00 | 2025-05-09 15:00 | 52, 56 | 22.44d | 0d |
| 58 | 3.2.4.3 | Size Battery | 2.5h | 2025-05-09 15:00 | 2025-05-12 08:30 | 57, 53 | 22.44d |  |
| 59 | 3.2.5 | **Perform Structures & Materials Design** | 0.62d | 2025-05-06 10:30 | 2025-05-06 16:30 | 47SS | 25.56d | 3.31d |
| 60 | 3.2.5.1 | Design Structure | 5h | 2025-05-06 10:30 | 2025-05-06 16:30 |  | 25.56d | 0d |
| 61 | 3.2.5.2 | Select Material | 1.5h | 2025-05-06 10:30 | 2025-05-06 12:00 | 60SS | 26d |  |
| 62 | 3.2.6 | Evaluate Requirement Compliance | 5h | 2025-05-12 10:00 | 2025-05-12 16:00 | 51, 47, 55, 59 | 22.25d |  |
| 63 | 3.3 | **Trade-Off** | 2.25d | 2025-05-12 16:00 | 2025-05-15 09:00 | 45 | 22.25d |  |
| 64 | 3.3.1 | **Perform Trade-Off** | 0.25d | 2025-05-12 16:00 | 2025-05-13 09:00 |  | 22.5d | 0d |
| 65 | 3.3.1.1 | Determine Selection Criteria & Weights | 2h | 2025-05-12 16:00 | 2025-05-13 09:00 |  | 22.5d | 0d |
| 66 | 3.3.1.2 | Graphical Trade-Off Tables | 2h | 2025-05-12 16:00 | 2025-05-13 09:00 | 65SS | 22.5d |  |
| 67 | 3.3.2 | **Extend Risk Analysis** | 0.5d | 2025-05-12 16:00 | 2025-05-13 11:00 | 64SS | 22.25d | 0d |
| 68 | 3.3.2.1 | Update Risk Map | 2h | 2025-05-12 16:00 | 2025-05-13 09:00 |  | 22.25d | 0d |
| 69 | 3.3.2.2 | Assess Concept Risk | 2h | 2025-05-13 09:00 | 2025-05-13 11:00 | 68 | 22.25d |  |
| 70 | 3.3.3 | **Draft Midterm Report** | 1.25d | 2025-05-13 11:00 | 2025-05-14 14:00 | 64, 67 | 22.25d | 0d |
| 71 | 3.3.3.1 | Write Midterm Report | 8h | 2025-05-13 11:00 | 2025-05-14 11:00 |  | 22.25d | 0d |
| 72 | 3.3.3.2 | Proofread Midterm Report | 1h | 2025-05-14 11:00 | 2025-05-14 12:00 | 71 | 22.25d | 0d |
| 73 | 3.3.3.3 | Implement Feedback | 1h | 2025-05-14 13:00 | 2025-05-14 14:00 | 72 | 22.25d |  |
| 74 | 3.3.4 | **Organize Midterm Review** | 0.5d | 2025-05-14 14:00 | 2025-05-15 09:00 | 70 | 22.25d |  |
| 75 | 3.3.4.1 | Create Presentation | 2h | 2025-05-14 14:00 | 2025-05-14 16:00 |  | 22.25d | 0d |
| 76 | 3.3.4.2 | Practice Presentation | 2h | 2025-05-14 14:00 | 2025-05-14 16:00 | 75SS | 22.25d | 0d |
| 77 | 3.3.4.3 | Midterm Review | 2h | 2025-05-14 16:00 | 2025-05-15 09:00 | 76 | 22.25d |  |
| 78 | 4 | **Detailed Design** | 7d | 2025-05-15 09:00 | 2025-05-26 09:00 | 34 | 22.25d | 0d |
| 79 | 4.1 | **Perform Detailed Design** | 1.38d | 2025-05-15 15:00 | 2025-05-19 09:00 | 120 | 22.25d | 0d |
| 80 | 4.1.1 | **Perform Aerodynamic Subsystem Design** | 1d | 2025-05-15 15:00 | 2025-05-16 15:00 |  | 22.62d | 0d |
| 81 | 4.1.1.1 | Select Airfoil | 0.5h | 2025-05-15 15:00 | 2025-05-15 15:30 |  | 22.62d | 0d |
| 82 | 4.1.1.2 | Design Empennage | 1h | 2025-05-15 15:30 | 2025-05-15 16:30 | 81 | 22.62d | 0d |
| 83 | 4.1.1.3 | Optimize Aerodynamics | 2h | 2025-05-15 16:30 | 2025-05-16 09:30 | 82 | 22.62d | 0d |
| 84 | 4.1.1.4 | Perform CFD Analysis | 4h | 2025-05-16 09:30 | 2025-05-16 14:30 | 83 | 22.62d | 0d |
| 85 | 4.1.1.5 | Revise Final Drag Budget | 0.5h | 2025-05-16 14:30 | 2025-05-16 15:00 | 84 | 22.62d |  |

| ID | WBS | Task | Duration | Start | Finish | Predecessors | Total slack | Free slack |
| --- | --- | --- | --- | --- | --- | --- | --- | --- |
| 86 | 4.1.2 | **Perform Detailed EPS Architecture Design** | 0.38d | 2025-05-15 15:00 | 2025-05-16 09:00 | 80SS | 23.25d |  |
| 87 | 4.1.2.1 | Revise Final Power Budget | 0.5h | 2025-05-15 15:00 | 2025-05-15 15:30 |  | 23.25d | 0d |
| 88 | 4.1.2.2 | Select and Size Battery | 0.25h | 2025-05-15 15:30 | 2025-05-15 15:45 | 87 | 23.25d | 0d |
| 89 | 4.1.2.3 | Select and Size PDU | 0.25h | 2025-05-15 15:45 | 2025-05-15 16:00 | 88 | 23.25d | 0d |
| 90 | 4.1.2.4 | Design Electrical Architecture | 2h | 2025-05-15 16:00 | 2025-05-16 09:00 | 89 | 23.25d |  |
| 91 | 4.1.3 | **Perform Detailed Propulsion Design** | 0.5d | 2025-05-15 15:00 | 2025-05-16 10:00 | 80SS | 23.12d |  |
| 92 | 4.1.3.1 | Size and Place Propulsion System | 1h | 2025-05-15 15:00 | 2025-05-15 16:00 |  | 23.12d | 0d |
| 93 | 4.1.3.2 | Select Propeller and Motor | 1h | 2025-05-15 16:00 | 2025-05-15 17:00 | 92 | 23.12d | 0d |
| 94 | 4.1.3.3 | Model Propulsion System | 2h | 2025-05-16 08:00 | 2025-05-16 10:00 | 93 | 23.12d |  |
| 95 | 4.1.4 | **Design Control Subsystem** | 1.38d | 2025-05-15 15:00 | 2025-05-19 09:00 | 80SS | 22.25d |  |
| 96 | 4.1.4.1 | Size and Place Actuator | 1h | 2025-05-15 15:00 | 2025-05-15 16:00 |  | 22.25d | 0d |
| 97 | 4.1.4.2 | Size and Design Gyroscope | 1h | 2025-05-15 16:00 | 2025-05-15 17:00 | 96 | 22.25d | 0d |
| 98 | 4.1.4.3 | Select Actuator | 1h | 2025-05-16 08:00 | 2025-05-16 09:00 | 97 | 22.25d | 0d |
| 99 | 4.1.4.4 | Design Control Loop | 3h | 2025-05-16 09:00 | 2025-05-16 12:00 | 98 | 22.25d | 0d |
| 100 | 4.1.4.5 | Model Control System | 5h | 2025-05-16 13:00 | 2025-05-19 09:00 | 99 | 22.25d |  |
| 101 | 4.1.5 | **Design Comms Subsystem** | 0.38d | 2025-05-15 15:00 | 2025-05-16 09:00 | 80SS | 23.25d |  |
| 102 | 4.1.5.1 | Select Frequency Band | 1h | 2025-05-15 15:00 | 2025-05-15 16:00 |  | 23.25d | 0d |
| 103 | 4.1.5.2 | Create Link Budget | 1h | 2025-05-15 16:00 | 2025-05-15 17:00 | 102 | 23.25d | 0d |
| 104 | 4.1.5.3 | Size and Select Antenna | 1h | 2025-05-16 08:00 | 2025-05-16 09:00 | 103 | 23.25d |  |
| 105 | 4.1.6 | **Design Operational Architecture** | 0.5d | 2025-05-15 15:00 | 2025-05-16 10:00 | 80SS | 23.12d |  |
| 106 | 4.1.6.1 | Select Swarming Strategy | 1h | 2025-05-15 15:00 | 2025-05-15 16:00 |  | 23.12d | 0d |
| 107 | 4.1.6.2 | Model Swaming Behaviour | 2h | 2025-05-15 16:00 | 2025-05-16 09:00 | 106 | 23.12d | 0d |
| 108 | 4.1.6.3 | Model Environment | 1h | 2025-05-16 09:00 | 2025-05-16 10:00 | 107 | 23.12d |  |
| 109 | 4.1.7 | **Design Sensor** | 0.38d | 2025-05-15 15:00 | 2025-05-16 09:00 | 80SS | 23.25d |  |
| 110 | 4.1.7.1 | Select and Place Sensor | 1h | 2025-05-15 15:00 | 2025-05-15 16:00 |  | 23.25d | 0d |
| 111 | 4.1.7.2 | Model Sensor Data | 2h | 2025-05-15 16:00 | 2025-05-16 09:00 | 110 | 23.25d |  |

| ID | WBS | Task | Duration | Start | Finish | Predecessors | Total slack | Free slack |
| --- | --- | --- | --- | --- | --- | --- | --- | --- |
| 112 | 4.1.8 | **Design Structural Components** | 0.38d | 2025-05-15 15:00 | 2025-05-16 09:00 | 80SS | 23.25d |  |
| 113 | 4.1.8.1 | Create Structural Model | 0.5h | 2025-05-15 15:00 | 2025-05-15 15:30 |  | 23.25d | 0d |
| 114 | 4.1.8.2 | Perform FEM Analysis | 1.25h | 2025-05-15 15:30 | 2025-05-15 16:45 | 113 | 23.25d | 0d |
| 115 | 4.1.8.3 | Perform Dynamic Analysis | 1.25h | 2025-05-15 16:45 | 2025-05-16 09:00 | 114 | 23.25d |  |
| 116 | 4.1.9 | **Design Deployment Subsystem** | 0.25d | 2025-05-15 15:00 | 2025-05-15 17:00 | 80SS | 23.38d |  |
| 117 | 4.1.9.1 | Design Deployment System | 1h | 2025-05-15 15:00 | 2025-05-15 16:00 |  | 23.38d | 0d |
| 118 | 4.1.9.2 | Model Deployment System | 1h | 2025-05-15 16:00 | 2025-05-15 17:00 | 117 | 23.38d |  |
| 119 | 4.2 | **Verify & Validate** | 7d | 2025-05-15 09:00 | 2025-05-26 09:00 |  | 22.25d |  |
| 120 | 4.2.1 | **Perform Requirements Review** | 0.62d | 2025-05-15 09:00 | 2025-05-15 15:00 |  | 22.25d | 0d |
| 121 | 4.2.1.1 | Review Requirements | 1h | 2025-05-15 09:00 | 2025-05-15 10:00 |  | 22.25d | 0d |
| 122 | 4.2.1.2 | Analyse Killer Requirements | 2h | 2025-05-15 10:00 | 2025-05-15 12:00 | 121 | 22.25d | 0d |
| 123 | 4.2.1.3 | Mitigate or Change Requirements | 2h | 2025-05-15 13:00 | 2025-05-15 15:00 | 122 | 22.25d |  |
| 124 | 4.2.2 | **Evaluate Requirement Compliance** | 1.25d | 2025-05-22 16:00 | 2025-05-26 09:00 | 142 | 22.25d |  |
| 125 | 4.2.2.1 | Verify Requirements Compliance Through Inspection | 2h | 2025-05-22 16:00 | 2025-05-23 09:00 |  | 22.25d | 0d |
| 126 | 4.2.2.2 | Verify Requirements Compliance Through Analysis | 3h | 2025-05-23 09:00 | 2025-05-23 12:00 | 125 | 22.25d | 0d |
| 127 | 4.2.2.3 | Verify Requirements Compliance Through System Modelling | 5h | 2025-05-23 13:00 | 2025-05-26 09:00 | 126 | 22.25d |  |
| 128 | 4.2.3 | **Validate Model** | 0.62d | 2025-05-20 16:00 | 2025-05-21 12:00 | 146 | 24.88d |  |
| 129 | 4.2.3.1 | Generate Test Cases | 2h | 2025-05-20 16:00 | 2025-05-21 09:00 |  | 24.88d | 0d |
| 130 | 4.2.3.2 | Analyse Test Case Results | 1h | 2025-05-21 09:00 | 2025-05-21 10:00 | 129 | 24.88d | 0d |
| 131 | 4.2.3.3 | Investigate Model Through Inspection | 2h | 2025-05-21 10:00 | 2025-05-21 12:00 | 130 | 24.88d |  |
| 132 | 4.3 | **Integrate System** | 1.88d | 2025-05-19 09:00 | 2025-05-20 17:00 | 79 | 22.25d | 0d |
| 133 | 4.3.1 | **Perform Subsystem Assembly Design** | 1d | 2025-05-19 09:00 | 2025-05-20 09:00 |  | 22.25d | 0d |
| 134 | 4.3.1.1 | Design System Configuration | 5h | 2025-05-19 09:00 | 2025-05-19 15:00 |  | 22.25d | 0d |
| 135 | 4.3.1.2 | Design System Assembly Process | 3h | 2025-05-19 15:00 | 2025-05-20 09:00 | 134 | 22.25d |  |

| ID | WBS | Task | Duration | Start | Finish | Predecessors | Total slack | Free slack |
| --- | --- | --- | --- | --- | --- | --- | --- | --- |
| 136 | 4.3.2 | **Integrate Subsystems** | 0.88d | 2025-05-20 09:00 | 2025-05-20 17:00 | 133 | 22.25d |  |
| 137 | 4.3.2.1 | Design Aerodynamic Integration | 2h | 2025-05-20 09:00 | 2025-05-20 11:00 |  | 22.25d | 0d |
| 138 | 4.3.2.2 | Design EPS Integration | 1h | 2025-05-20 11:00 | 2025-05-20 12:00 | 137 | 22.25d | 0d |
| 139 | 4.3.2.3 | Design Structural Integration | 1h | 2025-05-20 13:00 | 2025-05-20 14:00 | 138 | 22.25d | 0d |
| 140 | 4.3.2.4 | Design Propulsion & Control Integration | 3h | 2025-05-20 14:00 | 2025-05-20 17:00 | 139 | 22.25d |  |
| 141 | 4.4 | **Simulate System** | 5.75d | 2025-05-15 09:00 | 2025-05-22 16:00 |  | 22.88d |  |
| 142 | 4.4.1 | **Simulate and Analyse** | 1.88d | 2025-05-21 08:00 | 2025-05-22 16:00 | 132 | 22.25d | 0d |
| 143 | 4.4.1.1 | Analyse Swarm Performance | 4h | 2025-05-21 08:00 | 2025-05-21 12:00 |  | 22.25d | 0d |
| 144 | 4.4.1.2 | Analyse Flight Performance | 7h | 2025-05-21 13:00 | 2025-05-22 11:00 | 143 | 22.25d | 0d |
| 145 | 4.4.1.3 | Analyse Sensor Performance | 4h | 2025-05-22 11:00 | 2025-05-22 16:00 | 144 | 22.25d |  |
| 146 | 4.4.2 | **Extend Simulation** | 3.75d | 2025-05-15 09:00 | 2025-05-20 16:00 |  | 24.88d | 0d |
| 147 | 4.4.2.1 | Model Iteration | 10h | 2025-05-15 09:00 | 2025-05-16 11:00 |  | 24.88d | 0d |
| 148 | 4.4.2.2 | Extend Simulation with Swarming | 10h | 2025-05-16 11:00 | 2025-05-19 14:00 | 147 | 24.88d | 0d |
| 149 | 4.4.2.3 | Integration of Submodels | 10h | 2025-05-19 14:00 | 2025-05-20 16:00 | 148 | 24.88d |  |
| 150 | 5 | **Final Phase** | 19.38d | 2025-05-26 09:00 | 2025-06-20 12:00 | 78 | 4.5d |  |
| 151 | 5.1 | **Final Report** | 19.38d | 2025-05-26 09:00 | 2025-06-20 12:00 |  | 4.5d |  |
| 152 | 5.1.1 | **Draft Final Report** | 19.38d | 2025-05-26 09:00 | 2025-06-20 12:00 |  | 4.5d | 0d |
| 153 | 5.1.1.1 | Proofread Final Report | 4h | 2025-05-26 09:00 | 2025-05-26 14:00 |  | 23.38d |  |
| 154 | 5.1.1.2 | Implement Feedback | 4h | 2025-06-20 08:00 | 2025-06-20 12:00 | 240 | 4.5d |  |
| 155 | 5.1.2 | Draft Jury Summary | 8h | 2025-05-26 09:00 | 2025-05-27 09:00 | 152SS | 22.88d |  |
| 156 | 5.1.3 | **Prepare Final Review** | 1d | 2025-05-26 09:00 | 2025-05-27 09:00 |  | 22.88d | 0d |
| 157 | 5.1.3.1 | Create Presentation | 5h | 2025-05-26 09:00 | 2025-05-26 15:00 |  | 22.88d | 0d |
| 158 | 5.1.3.2 | Practice Presentation | 3h | 2025-05-26 15:00 | 2025-05-27 09:00 | 157 | 22.88d |  |
| 159 | 5.2 | **Symposium** | 1.62d | 2025-05-26 09:00 | 2025-05-27 15:00 |  | 22.25d |  |
| 160 | 5.2.1 | Create Poster | 13h | 2025-05-26 09:00 | 2025-05-27 15:00 | 156SS | 22.25d |  |
| 161 | 5.2.2 | Draft Red Booklet Summary | 8h | 2025-05-26 09:00 | 2025-05-27 09:00 | 156SS | 22.88d |  |
| 162 | 5.2.3 | Prepare Symposium Presentation | 8h | 2025-05-26 09:00 | 2025-05-27 09:00 | 156SS | 22.88d |  |

| ID | WBS | Task | Duration | Start | Finish | Predecessors | Total slack | Free slack | Resources | Work |
| --- | --- | --- | --- | --- | --- | --- | --- | --- | --- | --- |
| 163 | 2 | **Concept Phase** | 3.06d | 2025-04-28 13:00 | 2025-05-01 13:30 | 2 | 22.25d | 0d |  | 41.4h |
| 164 | 2.1 | **Product and Project Scoping** | 0.36d | 2025-04-28 13:00 | 2025-04-28 15:54 |  | 24.95d | 0d |  | 7.9h |
| 165 | 2.1.1 | Establish Project Objectives | 0.5h | 2025-04-28 13:00 | 2025-04-28 13:30 |  | 25.06d | 0d | DP | 0.5h |
| 166 | 2.1.2 | **Perform Market Analysis** | 0.19d | 2025-04-28 13:30 | 2025-04-28 15:00 | 165 | 25.06d | 0d | TS | 1.5h |
| 167 | 2.1.2.1 | Analyze Existing Solutions & Market Needs | 1h | 2025-04-28 13:30 | 2025-04-28 14:30 | 165 | 25.06d | 0d |  |  |
| 168 | 2.1.2.2 | Perform SWOT of Prouduct on Market | 0.5h | 2025-04-28 14:30 | 2025-04-28 15:00 | 167 | 25.06d |  |  |  |
| 169 | 2.1.3 | Resource Allocation & Budget Breakdown | 1.5h | 2025-04-28 13:30 | 2025-04-28 15:00 | 166SS | 25.06d |  | TS | 1.5h |
| 170 | 2.1.4 | **Develop Risk Assessment** | 0.3d | 2025-04-28 13:30 | 2025-04-28 15:54 | 166SS | 24.95d |  | JQ | 2.4h |
| 171 | 2.1.4.1 | Technical Risk Assessment | 1.2h | 2025-04-28 13:30 | 2025-04-28 14:42 |  | 24.95d | 0d |  |  |
| 172 | 2.1.4.2 | Contingency Management | 1.2h | 2025-04-28 14:42 | 2025-04-28 15:54 | 171 | 24.95d |  |  |  |
| 173 | 2.1.5 | Develop Sustainable Development Approach | 2h | 2025-04-28 13:30 | 2025-04-28 15:30 | 166SS | 25d |  | MS | 2h |
| 174 | 2.2 | **Literature Study** | 0.38d | 2025-04-28 13:00 | 2025-04-28 16:00 | 164SS | 22.25d | 0d |  | 3.5h |
| 175 | 2.2.1 | **Conduct Research on Relevant Topics** | 0.12d | 2025-04-28 13:00 | 2025-04-28 14:00 |  | 22.25d |  | JFM | 1h |
| 176 | 2.2.1.1 | Research Aerodynamic Phenomena | 1h | 2025-04-28 13:00 | 2025-04-28 14:00 |  | 22.25d | 0d |  |  |
| 177 | 2.2.1.2 | Research Stability & Control Characteristics | 1h | 2025-04-28 13:00 | 2025-04-28 14:00 | 176SS | 22.5d |  |  |  |
| 178 | 2.2.1.3 | Research Propulsion & Power Options | 1h | 2025-04-28 13:00 | 2025-04-28 14:00 | 176SS | 22.5d |  |  |  |
| 179 | 2.2.1.4 | Research Structure & Materials of Similar Products | 0.5h | 2025-04-28 13:00 | 2025-04-28 13:30 | 176SS | 22.56d |  |  |  |
| 180 | 2.2.1.5 | Begin Initial Swarming Research | 0.5h | 2025-04-28 13:00 | 2025-04-28 13:30 | 176SS | 22.25d | 0d |  |  |
| 181 | 2.2.2 | **Review Literature with Teammates** | 0.12d | 2025-04-28 13:30 | 2025-04-28 14:30 |  | 22.25d |  | IPD | 1h |
| 182 | 2.2.2.1 | Present Findings with Teammates | 0.5h | 2025-04-28 13:30 | 2025-04-28 14:00 | 180 | 22.25d | 0d |  |  |
| 183 | 2.2.2.2 | Combine & Refine Findings | 0.5h | 2025-04-28 14:00 | 2025-04-28 14:30 | 182 | 22.25d | 0d |  |  |
| 184 | 2.2.3 | **Draft Literature Study** | 0.19d | 2025-04-28 14:30 | 2025-04-28 16:00 |  | 22.25d |  | RV | 1.5h |
| 185 | 2.2.3.1 | Write Literature Study | 1h | 2025-04-28 14:30 | 2025-04-28 15:30 | 183 | 22.25d | 0d |  |  |
| 186 | 2.2.3.2 | Review & Quality Control | 0.5h | 2025-04-28 15:30 | 2025-04-28 16:00 | 185 | 22.25d |  |  |  |

| ID | WBS | Task | Duration | Start | Finish | Predecessors | Total slack | Free slack | Resources | Work |
| --- | --- | --- | --- | --- | --- | --- | --- | --- | --- | --- |
| 187 | 2.3 | **Requirement Analysis** | 0.5d | 2025-04-28 16:00 | 2025-04-29 11:00 | 174 | 22.25d | 0d |  | 6.5h |
| 188 | 2.3.1 | **Review Stakeholder Requirements & Constraints** | 0.12d | 2025-04-28 16:00 | 2025-04-28 17:00 |  | 22.25d | 0d | TK | 1h |
| 189 | 2.3.1.1 | Review User-/Top-Level Requirements and Constraints | 0.5h | 2025-04-28 16:00 | 2025-04-28 16:30 |  | 22.25d | 0d |  |  |
| 190 | 2.3.1.2 | Identify Driving Requirements and Constraints | 0.5h | 2025-04-28 16:00 | 2025-04-28 16:30 | 189SS | 22.25d | 0d |  |  |
| 191 | 2.3.1.3 | Assess Feasibility of Requirements and Constraints | 0.5h | 2025-04-28 16:30 | 2025-04-28 17:00 | 190 | 22.25d |  |  |  |
| 192 | 2.3.2 | **Break Down Requirements** | 0.38d | 2025-04-29 08:00 | 2025-04-29 11:00 | 188 | 22.25d | 0d | KS | 3h |
| 193 | 2.3.2.1 | Create Requirement Discovery Tree | 3h | 2025-04-29 08:00 | 2025-04-29 11:00 |  | 22.25d | 0d |  |  |
| 194 | 2.3.2.2 | Determine System Requirements | 1.5h | 2025-04-29 08:00 | 2025-04-29 09:30 | 193SS | 22.25d | 0d |  |  |
| 195 | 2.3.2.3 | Determine Subsystem Requirements | 1.5h | 2025-04-29 09:30 | 2025-04-29 11:00 | 194 | 22.25d |  |  |  |
| 196 | 2.3.3 | **Map System Functions** | 0.31d | 2025-04-29 08:00 | 2025-04-29 10:30 | 192SS | 22.31d |  | DvdP | 2.5h |
| 197 | 2.3.3.1 | Create Functional Flow Diagram | 1.25h | 2025-04-29 08:00 | 2025-04-29 09:15 |  | 22.31d | 0d |  |  |
| 198 | 2.3.3.2 | Create Functional Breakdown Diagram | 1.25h | 2025-04-29 09:15 | 2025-04-29 10:30 | 197 | 22.31d |  |  |  |
| 199 | 2.4 | **Simulation Setup** | 0.44d | 2025-04-28 16:00 | 2025-04-29 10:30 | 187SS | 24.5d |  |  | 6h |
| 200 | 2.4.1 | Define Simulation Goals | 0.4h | 2025-04-28 16:00 | 2025-04-28 16:24 |  | 24.5d | 0d | DvdP | 0.4h |
| 201 | 2.4.2 | **Create Simulation Basis** | 0.07d | 2025-04-28 16:24 | 2025-04-28 17:00 | 200 | 24.5d | 0d | KS | 0.6h |
| 202 | 2.4.2.1 | Select Simulation Tools | 0.2h | 2025-04-28 16:24 | 2025-04-28 16:36 |  | 24.5d | 0d |  |  |
| 203 | 2.4.2.2 | Set Up Simulation Environment | 0.3h | 2025-04-28 16:36 | 2025-04-28 16:54 | 202 | 24.5d | 0d |  |  |
| 204 | 2.4.2.3 | Document Assumptions | 0.1h | 2025-04-28 16:54 | 2025-04-28 17:00 | 203 | 24.5d |  |  |  |
| 205 | 2.4.3 | **Develop Preliminary Aerodynamics Simulation** | 0.31d | 2025-04-29 08:00 | 2025-04-29 10:30 | 201 | 24.5d | 0d | TK | 2.5h |
| 206 | 2.4.3.1 | Build Simulation | 1.5h | 2025-04-29 08:00 | 2025-04-29 09:30 |  | 24.5d | 0d |  |  |
| 207 | 2.4.3.2 | Run Baseline Tests | 0.5h | 2025-04-29 09:30 | 2025-04-29 10:00 | 206 | 24.5d | 0d |  |  |
| 208 | 2.4.3.3 | Analyze Basic Results | 0.5h | 2025-04-29 10:00 | 2025-04-29 10:30 | 207 | 24.5d |  |  |  |
| 209 | 2.4.4 | **Develop Preliminary Dynamics Simulation** | 0.31d | 2025-04-29 08:00 | 2025-04-29 10:30 | 205SS | 24.5d |  | IPD | 2.5h |
| 210 | 2.4.4.1 | Build Simulation | 1.5h | 2025-04-29 08:00 | 2025-04-29 09:30 |  | 24.5d | 0d |  |  |
| 211 | 2.4.4.2 | Run Baseline Tests | 0.5h | 2025-04-29 09:30 | 2025-04-29 10:00 | 210 | 24.5d | 0d |  |  |
| 212 | 2.4.4.3 | Analyze Basic Results | 0.5h | 2025-04-29 10:00 | 2025-04-29 10:30 | 211 | 24.5d |  |  |  |

| ID | WBS | Task | Type | Duration | Start | Finish | Predecessors | Total slack | Free slack | Resources | Work |
| --- | --- | --- | --- | --- | --- | --- | --- | --- | --- | --- | --- |
| 213 | 2.5 | **Concept Generation** |  | 0.94d | 2025-04-29 11:00 | 2025-04-30 10:30 | 187 | 22.25d | 0d |  | 7.5h |
| 214 | 6.5.1 | **Brainstorm Subsystem Architecture Ideas** |  | 0.31d | 2025-04-29 11:00 | 2025-04-29 14:30 |  | 22.25d | 0d | MS | 2.5h |
| 215 | 6.5.1.1 | Control & Stability Subsystem |  | 2.5h | 2025-04-29 11:00 | 2025-04-29 14:30 |  | 22.25d | 0d |  |  |
| 216 | 6.5.1.2 | Aerodynamics Subsystem |  | 2.5h | 2025-04-29 11:00 | 2025-04-29 14:30 | 215SS | 22.25d | 0d |  |  |
| 217 | 6.5.1.3 | Power & Propulsion Subsystem |  | 2.5h | 2025-04-29 11:00 | 2025-04-29 14:30 | 216SS | 22.25d | 0d |  |  |
| 218 | 6.5.1.4 | Structures & Materials Subsystem |  | 2.5h | 2025-04-29 11:00 | 2025-04-29 14:30 | 217SS | 22.25d |  |  |  |
| 219 | 6.5.2 | **Define System Architecture Concepts** |  | 0.31d | 2025-04-29 14:30 | 2025-04-29 17:00 | 214 | 22.25d | 0d | RV | 2.5h |
| 220 | 6.5.2.1 | Integrate Subsystem Ideas |  | 1h | 2025-04-29 14:30 | 2025-04-29 15:30 |  | 22.25d | 0d |  |  |
| 221 | 6.5.2.2 | Define and Sketch Systems |  | 0.5h | 2025-04-29 15:30 | 2025-04-29 16:00 | 220 | 22.25d | 0d |  |  |
| 222 | 6.5.2.3 | Generate Concepts |  | 1h | 2025-04-29 16:00 | 2025-04-29 17:00 | 221 | 22.25d |  |  |  |
| 223 | 6.5.3 | **Select Concepts** |  | 0.31d | 2025-04-30 08:00 | 2025-04-30 10:30 | 219 | 22.25d |  | TS | 2.5h |
| 224 | 6.5.3.1 | Generate Design Option Tree |  | 1h | 2025-04-30 08:00 | 2025-04-30 09:00 |  | 22.25d | 0d |  |  |
| 225 | 6.5.3.2 | Assess Feasibility |  | 0.25h | 2025-04-30 09:00 | 2025-04-30 09:15 | 224 | 22.25d | 0d |  |  |
| 226 | 6.5.3.3 | Select Initial Decision Criteria |  | 1h | 2025-04-30 09:15 | 2025-04-30 10:15 | 225 | 22.25d | 0d |  |  |
| 227 | 6.5.3.4 | Select 3 Concepts |  | 0.25h | 2025-04-30 10:15 | 2025-04-30 10:30 | 226 | 22.25d |  |  |  |
| 228 | 2.6 | **Review and Reporting** |  | 1.25d | 2025-04-30 10:30 | 2025-05-01 13:30 | 213 | 22.25d |  |  | 10h |
| 229 | 2.6.1 | **Draft Executive Overview** |  | 0.05d | 2025-04-30 10:30 | 2025-04-30 10:54 |  | 22.25d | 0d | JQ | 0.4h |
| 230 | 2.6.1.1 | Write Executive Overview |  | 0.3h | 2025-04-30 10:30 | 2025-04-30 10:48 |  | 22.25d | 0d |  |  |
| 231 | 2.6.1.2 | Review and Quality Control |  | 0.1h | 2025-04-30 10:48 | 2025-04-30 10:54 | 230 | 22.25d |  |  |  |
| 232 | 2.6.2 | **Draft Baseline Report** |  | 0.62d | 2025-04-30 10:54 | 2025-04-30 16:54 | 229 | 22.25d | 0d | RV | 5h |
| 233 | 2.6.2.1 | Write Baseline Report |  | 4h | 2025-04-30 10:54 | 2025-04-30 15:54 |  | 22.25d | 0d |  |  |
| 234 | 2.6.2.2 | Review and Quality Control |  | 1h | 2025-04-30 15:54 | 2025-04-30 16:54 | 233 | 22.25d |  |  |  |
| 235 | 2.6.3 | Organize Baseline Review |  | 3h | 2025-04-30 16:54 | 2025-05-01 10:54 | 232 | 22.25d | 0d | DP | 3h |
| 236 | 2.6.4 | **Perform Peer Review** |  | 0.2d | 2025-05-01 10:54 | 2025-05-01 13:30 | 235 | 22.25d |  | ALL | 1.6h |
| 237 | 2.6.4.1 | Review other Groups |  | 1h | 2025-05-01 10:54 | 2025-05-01 11:54 |  | 22.25d | 0d |  |  |
| 238 | 2.6.4.2 | Implement Own Feedback |  | 0.6h | 2025-05-01 11:54 | 2025-05-01 13:30 | 237 | 22.25d |  |  |  |
| 239 | 7 | Baseline Review | milestone, manual | 0h | 2025-05-02 08:00 | 2025-05-02 08:00 |  |  |  |  |  |
| 240 | 8 | Final Review | milestone, manual | 0h | 2025-06-20 08:00 | 2025-06-20 08:00 |  |  |  |  |  |
| 241 | 9 | Final Presentation | milestone, manual | 0h | 2025-06-27 08:00 | 2025-06-27 08:00 |  |  |  |  |  |
